# NDRRMC-GANTT

Schedule from MS Project, 2018-01-25 to 2018-04-24, costs in ₱.

## Calendars

- Standard: Mon-Fri 08:00-12:00, 13:00-17:00; Sat-Sun off.

## Resources

| Resource | Rate |
| --- | --- |
| Web Designer and Developer with PHP Skills | 128.13 |
| Quality Assurance Analyst | 136.51 |
| IT Project Manager | 477.98 |
| Documentation Specialist | 101.6 |

## Schedule

| ID | WBS | Task | Duration | Start | Finish | Predecessors | Total slack | Free slack | Constraint | Resources | Work | Cost |
| --- | --- | --- | --- | --- | --- | --- | --- | --- | --- | --- | --- | --- |
| 1 | 1 | **NDRRMC-Logistics Web Application** | 64d | 2018-01-25 | 2018-04-24 |  |  |  |  |  | 1084h | 242,913.08 |
| 2 | 1.1 | **Initiation** | 4d | 2018-01-25 | 2018-01-30 |  | 3d | 0d |  |  | 48h | 18,225.28 |
| 3 | 1.1.1 | Project Kick-Off Meeting | 1d | 2018-01-25 | 2018-01-25 |  | 3d | 0d | start no earlier than 2018-01-25 | Quality Assurance Analyst; IT Project Manager; Web Designer and Developer with PHP Skills; Documentation Specialist | 32h | 6,753.76 |
| 4 | 1.1.2 | **Develop a Project Charter** | 3d | 2018-01-26 | 2018-01-30 | 3 | 3d |  |  |  | 16h | 11,471.52 |
| 5 | 1.1.2.1 | Identify the Stakeholders | 4h | 2018-01-26 | 2018-01-26 |  | 3d | 0d | start no earlier than 2018-01-26 | IT Project Manager | 4h | 1,911.92 |
| 6 | 1.1.2.2 | Define Project Organization | 4h | 2018-01-26 | 2018-01-26 | 5 | 3d | 0d | start no earlier than 2018-01-26 | IT Project Manager | 4h | 1,911.92 |
| 7 | 1.1.2.3 | Determine Skill and Training Requirements for Project Team | 1d | 2018-01-29 | 2018-01-29 | 6 | 3d | 0d | start no earlier than 2018-01-29 | IT Project Manager | 8h | 3,823.84 |
| 8 | 1.1.2.4 | Review Project Organization | 1d | 2018-01-30 | 2018-01-30 | 7 | 3d |  | start no earlier than 2018-01-30 | IT Project Manager |  | 3,823.84 |
| 9 | 1.2 | **Planning** | 13.5d | 2018-01-31 | 2018-02-19 | 2 | 2d | 0d |  |  | 280h | 72,543.24 |
| 10 | 1.2.1 | Define the Scope and Objectives | 4h | 2018-01-31 | 2018-01-31 |  | 3d | 0d | start no earlier than 2018-01-31 | Documentation Specialist; IT Project Manager; Quality Assurance Analyst; Web Designer and Developer with PHP Skills | 16h | 3,376.88 |
| 11 | 1.2.2 | Create the Work Breakdon Structure | 1d | 2018-02-01 | 2018-02-01 | 10 | 13.5d |  | start no earlier than 2018-02-01 | IT Project Manager | 8h | 3,823.84 |
| 12 | 1.2.3 | Define the Project Duration | 4h | 2018-01-31 | 2018-01-31 | 10 | 3d | 1d | start no earlier than 2018-01-31 | IT Project Manager; Web Designer and Developer with PHP Skills; Documentation Specialist; Quality Assurance Analyst | 16h | 3,376.88 |
| 13 | 1.2.4 | Identify the resources needed | 2d | 2018-02-02 | 2018-02-05 | 12 | 2d | 0d | start no earlier than 2018-02-02 | Documentation Specialist; IT Project Manager; Web Designer and Developer with PHP Skills | 48h | 11,323.36 |
| 14 | 1.2.5 | Develop schedule allocation for the project team | 4h | 2018-02-06 | 2018-02-06 | 13 | 2d | 0d | start no earlier than 2018-02-05 | IT Project Manager | 4h | 1,911.92 |
| 15 | 1.2.6 | Estimate Costs | 2d | 2018-02-06 | 2018-02-08 | 14 | 2d | 0d | start no earlier than 2018-02-06 | IT Project Manager | 16h | 7,647.68 |
| 16 | 1.2.7 | Determine Budget | 2d | 2018-02-08 | 2018-02-12 | 15 | 2d | 0d | start no earlier than 2018-02-08 | IT Project Manager | 16h | 7,647.68 |
| 17 | 1.2.8 | Quality Planning | 2d | 2018-02-06 | 2018-02-07 | 13 | 9.5d |  | start no earlier than 2018-02-03 | Quality Assurance Analyst; Web Designer and Developer with PHP Skills | 28h | 3,688.2 |
| 18 | 1.2.9 | Plan Human Resource Management | 1d | 2018-02-12 | 2018-02-13 | 16 | 2d | 0d | start no earlier than 2018-02-12 | IT Project Manager | 8h | 3,823.84 |
| 19 | 1.2.10 | Identify Communication Flow | 1d | 2018-02-13 | 2018-02-14 | 18 | 2d | 0d | start no earlier than 2018-02-13 | Documentation Specialist; IT Project Manager; Quality Assurance Analyst; Web Designer and Developer with PHP Skills | 32h | 6,753.76 |
| 20 | 1.2.11 | Identify the Risks | 1d | 2018-02-14 | 2018-02-15 | 19 | 2d | 0d | start no earlier than 2018-02-14 | Documentation Specialist; IT Project Manager; Quality Assurance Analyst; Web Designer and Developer with PHP Skills | 32h | 6,753.76 |
| 21 | 1.2.12 | Procurement Planning | 1d | 2018-02-15 | 2018-02-16 | 20 | 2d | 0d | start no earlier than 2018-02-15 | IT Project Manager; Documentation Specialist; Web Designer and Developer with PHP Skills | 24h | 5,661.68 |
| 22 | 1.2.13 | Finalize Planning Phase | 1d | 2018-02-16 | 2018-02-19 | 21 | 2d |  | start no earlier than 2018-02-16 | Documentation Specialist; IT Project Manager; Quality Assurance Analyst; Web Designer and Developer with PHP Skills | 32h | 6,753.76 |
| 23 | 1.3 | **Executing** | 43d | 2018-02-19 | 2018-04-19 | 9 | 0.5d | 0d |  |  | 716h | 141,566.96 |
| 24 | 1.3.1 | Develop System Design | 5d | 2018-02-19 | 2018-02-26 |  | 2d | 0d | start no earlier than 2018-02-19 | Web Designer and Developer with PHP Skills; IT Project Manager | 80h | 24,244.4 |
| 25 | 1.3.2 | System Coding | 20d | 2018-02-26 | 2018-03-26 | 24 | 2d | 1.5d | start no earlier than 2018-02-26 | Web Designer and Developer with PHP Skills | 160h | 20,500.8 |
| 26 | 1.3.3 | Deliver Iteration 0 | 1d | 2018-03-28 | 2018-03-28 | 25, 27 | 0.5d | 0d | start no earlier than 2018-03-26 | Documentation Specialist; IT Project Manager; Quality Assurance Analyst; Web Designer and Developer with PHP Skills | 32h | 6,753.76 |
| 27 | 1.3.4 | Perform Quality Assurance and Testing | 15d | 2018-03-07 | 2018-03-27 |  | 0.5d | 0d | finish no earlier than 2018-03-27 | Quality Assurance Analyst | 120h | 16,381.2 |
| 28 | 1.3.5 | Create Documentation for Iteration 0 | 1d | 2018-03-29 | 2018-03-29 | 26 | 15d |  | start no earlier than 2018-03-27 | Documentation Specialist | 8h | 812.8 |
| 29 | 1.3.6 | Create Project Status Report | 1d | 2018-03-29 | 2018-03-29 | 26 | 0.5d | 0d | start no earlier than 2018-03-27 | IT Project Manager | 8h | 3,823.84 |
| 30 | 1.3.7 | Update Project Stakeholders and get Feedback | 4h | 2018-03-30 | 2018-03-30 | 29 | 0.5d | 0d | start no earlier than 2018-03-28 | IT Project Manager; Documentation Specialist; Quality Assurance Analyst; Web Designer and Developer with PHP Skills | 16h | 3,376.88 |
| 31 | 1.3.8 | Develop Iteration 1 | 4h | 2018-03-30 | 2018-03-30 | 30 | 0.5d | 0d | start no earlier than 2018-03-29 | Documentation Specialist; IT Project Manager; Quality Assurance Analyst; Web Designer and Developer with PHP Skills | 16h | 3,376.88 |
| 32 | 1.3.9 | Create Documentation for Iteration 1 | 1d | 2018-04-02 | 2018-04-02 | 31 | 0.5d | 0d | start no earlier than 2018-03-29 | Documentation Specialist | 8h | 812.8 |
| 33 | 1.3.10 | Create Project Status Report | 1d | 2018-04-03 | 2018-04-03 | 32 | 0.5d | 0d | start no earlier than 2018-03-30 | IT Project Manager | 8h | 3,823.84 |
| 34 | 1.3.11 | Update Project Stakeholders and get Feedback | 4h | 2018-04-04 | 2018-04-04 | 33 | 0.5d | 0d | start no earlier than 2018-04-02 | Documentation Specialist; IT Project Manager; Quality Assurance Analyst; Web Designer and Developer with PHP Skills | 16h | 3,376.88 |
| 35 | 1.3.12 | Develop Final Iteration of the System | 4h | 2018-04-04 | 2018-04-04 | 34 | 0.5d | 0d | start no earlier than 2018-04-03 | Documentation Specialist; IT Project Manager; Quality Assurance Analyst; Web Designer and Developer with PHP Skills | 16h | 3,376.88 |
| 36 | 1.3.13 | Finalize System Design | 3d | 2018-04-05 | 2018-04-09 | 24, 35 | 0.5d | 0d | start no earlier than 2018-04-04 | Web Designer and Developer with PHP Skills; IT Project Manager | 48h | 14,546.64 |
| 37 | 1.3.14 | Perform Quality Assurance and Testing | 2d | 2018-04-10 | 2018-04-11 | 36 | 0.5d | 0d | start no earlier than 2018-04-09 | Quality Assurance Analyst | 16h | 2,184.16 |
| 38 | 1.3.15 | Create Documentation for Iteration 2 | 4h | 2018-04-12 | 2018-04-12 | 37, 35 | 0.5d | 0d | start no earlier than 2018-04-11 | Documentation Specialist | 4h | 406.4 |
| 39 | 1.3.16 | Finalize Iteration 2 | 2d | 2018-04-12 | 2018-04-16 | 38, 35 | 0.5d | 0d | start no earlier than 2018-04-11 | IT Project Manager; Documentation Specialist; Quality Assurance Analyst; Web Designer and Developer with PHP Skills | 64h | 13,507.52 |
| 40 | 1.3.17 | Finalize Documentation | 3d | 2018-04-16 | 2018-04-19 | 39 | 0.5d |  | start no earlier than 2018-04-16 | Documentation Specialist; IT Project Manager; Quality Assurance Analyst; Web Designer and Developer with PHP Skills | 96h | 20,261.28 |

| ID | WBS | Task | Duration | Start | Finish | Predecessors | Total slack | Free slack | Resources | Work | Cost |
| --- | --- | --- | --- | --- | --- | --- | --- | --- | --- | --- | --- |
| 41 | 1.4 | **Closing** | 3d | 2018-04-19 | 2018-04-24 | 23 | 0.5d |  |  | 40h | 10,577.6 |
| 42 | 1.4.1 | Close Project | 1d | 2018-04-19 | 2018-04-20 |  | 0.5d | 0d | Documentation Specialist; IT Project Manager; Quality Assurance Analyst; Web Designer and Developer with PHP Skills | 32h | 6,753.76 |
| 43 | 1.4.2 | Close Procurement | 2d | 2018-04-20 | 2018-04-24 | 42 | 0.5d |  | IT Project Manager [50%] | 8h | 3,823.84 |
